task_id,phase,task_name,expected_result,workload_label,work_units,predecessors,task_status,commitment_scope,start_date,end_date,date_status,source_section,baseline_start_unit,baseline_end_unit
M1-01,M1,固定 UCD 规则入口和本轮版本基线,可定位的规则入口、节点和确认日期,小,1,,UNSET,PILOT_CANDIDATE,,,UNSET,README / 4 / M1 细分任务,0,1
M1-02,M1,固定技术平台范围和已有技术证据,设计端、Python Qt、Vue2、C++ Qt、Vue3 的范围及现有能力说明,小,1,M1-01,UNSET,PILOT_CANDIDATE,,,UNSET,README / 4 / M1 细分任务,1,2
M1-03,M1,固定 `41 + 2` 组件任务基线,组件分类、数量和新增复合组件说明,小,1,M1-01,UNSET,PILOT_CANDIDATE,,,UNSET,README / 4 / M1 细分任务,1,2
M1-04,M1,固定首批组件和暂缓范围,首批实际改造清单、其余组件后续清单,小,1,M1-03,UNSET,PILOT_CANDIDATE,,,UNSET,README / 4 / M1 细分任务,2,3
M1-05,M1,定义组件、状态、Token 接入和验收结果的统计方法,同一套完成统计口径及可定位证据要求,中,2,M1-03、M1-04,UNSET,PILOT_CANDIDATE,,,UNSET,README / 4 / M1 细分任务,3,5
M1-06,M1,汇总 M2-M4 和后续事项的完整任务基线,不含工期的全量任务清单，作为后续排期唯一输入,中,2,M1-04、M1-05,UNSET,PILOT_CANDIDATE,,,UNSET,README / 4 / M1 细分任务,5,7
M1-07,M1,标明任务的前后依赖和相对工作量,可用于排期的任务顺序和工作量等级,中,2,M1-06,UNSET,PILOT_CANDIDATE,,,UNSET,README / 4 / M1 细分任务,7,9
M1-08,M1,确定 9 月 30 日前的承诺范围和日期,明确的阶段交付、开始日期、结束日期和暂缓项,中,2,M1-07,UNSET,PILOT_CANDIDATE,,,UNSET,README / 4 / M1 细分任务,9,11
M1-09,M1,用 Python 生成最终甘特图和汇报版,大型单图甘特图、README 说明和汇报用版本,中,2,M1-08,UNSET,PILOT_CANDIDATE,,,UNSET,README / 4 / M1 细分任务,11,13
M2-01,M2,确认本轮哪些属性进入 Token、哪些不进入,`Base → Semantic → Component`、Profile、Theme、引用和例外清单,中,2,M1-04,UNSET,PILOT_CANDIDATE,,,UNSET,README / 4 / M2 细分任务,3,5
M2-02,M2,映射首批组件所需的界面密度规则,IBM Carbon、华为和 Apple 公开规则到 UCD 的采用结果,中,2,M2-01,UNSET,PILOT_CANDIDATE,,,UNSET,README / 4 / M2 细分任务,5,7
M2-03,M2,固定设计资产管理方法,Icon、插画、图表、机械图及业务线与集团资产的管理关系,中,2,M2-01,UNSET,PILOT_CANDIDATE,,,UNSET,README / 4 / M2 细分任务,5,7
M2-04,M2,选定一个 PyQt 和一个 C++ Qt 真实业务试点场景,实际项目、页面、代码位置和选择依据,中,2,M1-04,UNSET,PILOT_CANDIDATE,,,UNSET,README / 4 / M2 细分任务,3,5
M2-05,M2,整理现有 Token 数据并补齐本轮所需内容,Token JSON、Schema、Profile、组件映射、平台映射和版本信息草案,大,4,M2-01、M2-04,UNSET,PILOT_CANDIDATE,,,UNSET,README / 4 / M2 细分任务,5,9
M2-06,M2,检查 Token 数据并标明每类数据的目标位置,Schema、命名、层级、类型、单位、引用、目标文件类别和未支持项,中,2,M2-05,UNSET,PILOT_CANDIDATE,,,UNSET,README / 4 / M2 细分任务,9,11
M2-07,M2,编写首批组件的统一标准化要求,部位、尺寸、变体、状态、Token 关系、统一约束和平台自由项,中,2,M2-01、M2-02,UNSET,PILOT_CANDIDATE,,,UNSET,README / 4 / M2 细分任务,7,9
M2-08,M2,建立 Icon Token 和平台中立 Icon 资产库,Icon Token、文件库、资源索引、引用规则和资产对应关系,大,4,M2-03、M2-04,UNSET,PILOT_CANDIDATE,,,UNSET,README / 4 / M2 细分任务,7,11
M2-09,M2,在 PySide2 中验证真实 Icon 引用,文件、Token、索引和组件调用能够完整运行的证据,中,2,M2-08,UNSET,PILOT_CANDIDATE,,,UNSET,README / 4 / M2 细分任务,11,13
M2-10,M2,标准化 Pixso 按钮族,完成五项标准化检查的按钮设计组件,中,2,M2-06、M2-07、M2-08,UNSET,PILOT_CANDIDATE,,,UNSET,README / 4 / M2 细分任务,11,13
M2-11,M2,标准化 Pixso 单选框和复选框,完成五项标准化检查的选择设计组件,中,2,M2-06、M2-07,UNSET,PILOT_CANDIDATE,,,UNSET,README / 4 / M2 细分任务,11,13
M2-12,M2,标准化 Pixso 文本输入框和下拉选择器,完成五项标准化检查的输入与选择设计组件,中,2,M2-06、M2-07,UNSET,PILOT_CANDIDATE,,,UNSET,README / 4 / M2 细分任务,11,13
M2-13,M2,标准化参数配置行和完整表单模板,Token 化复合组件及组合使用示例,大,4,M2-10、M2-12,UNSET,PILOT_CANDIDATE,,,UNSET,README / 4 / M2 细分任务,13,17
M2-14,M2,标准化数据浏览表格和可编辑表格,同一表格族下的两种模式、状态和使用示例,大,4,M2-10、M2-11、M2-12,UNSET,PILOT_CANDIDATE,,,UNSET,README / 4 / M2 细分任务,13,17
M2-15,M2,按五项标准检查首批组件并闭环问题,原始问题、修正、复查和标准化完成结果,大,4,M2-09、M2-10、M2-11、M2-12、M2-13、M2-14,UNSET,PILOT_CANDIDATE,,,UNSET,README / 4 / M2 细分任务,17,21
M2-16,M2,锁定并发布 M3 实施输入包,已选试点、可用组件、Token、Icon、规则、版本和进入 M3 结论,中,2,M2-04、M2-06、M2-15,UNSET,PILOT_CANDIDATE,,,UNSET,README / 4 / M2 细分任务,21,23
M3-01,M3,为已选 PyQt 和 C++ Qt 项目建立隔离试点入口,独立分支或副本、实际代码位置、修改前版本和回退点,中,2,M2-16,UNSET,PILOT_CANDIDATE,,,UNSET,README / 4 / M3 细分任务,23,25
M3-02,M3,记录两个试点的初始状态,七部分对象清单、运行基线、截图和当前问题,中,2,M3-01,UNSET,PILOT_CANDIDATE,,,UNSET,README / 4 / M3 细分任务,25,27
M3-03,M3,实现共享 Token 解析层和平台输出分发,可运行的 Token 解析、引用、类型检查、错误处理、接口和测试,大,4,M2-16,UNSET,PILOT_CANDIDATE,,,UNSET,README / 4 / M3 细分任务,23,27
M3-04,M3,编写七部分 Token 化规则与 AI 交付规则,两个试点共用的规则结构、文件归属和人工确认项,大,4,M3-02、M3-03,UNSET,PILOT_CANDIDATE,,,UNSET,README / 4 / M3 细分任务,27,31
M3-05,M3,实现 PyQt 的 QSS、运行时 Token 和资产转换,可重复生成的 PyQt 样式、运行数据和资源清单,大,4,M3-03、M3-04,UNSET,PILOT_CANDIDATE,,,UNSET,README / 4 / M3 细分任务,31,35
M3-06,M3,实现 PyQt `.ui` 与 Python 接入方式,自动生成文件或人工维护文件修改差异及回退入口,大,4,M3-05,UNSET,PILOT_CANDIDATE,,,UNSET,README / 4 / M3 细分任务,35,39
M3-07,M3,改造 PyQt 首批组件,首批组件的 Token 接入、状态实现和实际调用结果,大,4,M3-05、M3-06,UNSET,PILOT_CANDIDATE,,,UNSET,README / 4 / M3 细分任务,39,43
M3-08,M3,改造 PyQt 真实业务场景,已有界面整改、新界面接入和关键业务操作结果,大,4,M3-07,UNSET,PILOT_CANDIDATE,,,UNSET,README / 4 / M3 细分任务,43,47
M3-09,M3,完成 PyQt 问题记录、修正和复查,原始问题、处理过程、回归结果和五项 AI 交付记录,中,2,M3-08,UNSET,PILOT_CANDIDATE,,,UNSET,README / 4 / M3 细分任务,47,49
M3-10,M3,实现 Vue2 的 CSS、JavaScript、模板和资产转换,可重复生成的 Vue2 输出及引用入口,大,4,M3-03、M3-04、M3-09,UNSET,PILOT_CANDIDATE,,,UNSET,README / 4 / M3 细分任务,49,53
M3-11,M3,接入 Vue2 首批组件并完成实际调用,首批组件 Token 接入、状态和项目调用结果,大,4,M3-10,UNSET,PILOT_CANDIDATE,,,UNSET,README / 4 / M3 细分任务,53,57
M3-12,M3,完成 Vue2 问题记录、修正和复查,原始问题、处理过程、回归结果和五项 AI 交付记录,中,2,M3-11,UNSET,PILOT_CANDIDATE,,,UNSET,README / 4 / M3 细分任务,57,59
M3-13,M3,实现 C++ Qt 的 QSS、类型化 C++ Token 和资产转换,QSS、头文件/实现文件、运行参数和资源清单,大,4,M3-03、M3-04、M3-12,UNSET,PILOT_CANDIDATE,,,UNSET,README / 4 / M3 细分任务,59,63
M3-14,M3,实现 C++ Qt `.ui` 与 C++ 接入方式,自动生成文件或人工维护文件修改差异及回退入口,大,4,M3-13,UNSET,PILOT_CANDIDATE,,,UNSET,README / 4 / M3 细分任务,63,67
M3-15,M3,改造 C++ Qt 首批组件,首批组件的 Token 接入、状态实现和实际调用结果,大,4,M3-13、M3-14,UNSET,PILOT_CANDIDATE,,,UNSET,README / 4 / M3 细分任务,67,71
M3-16,M3,改造 C++ Qt 真实业务场景,已有界面整改、新界面接入和关键业务操作结果,大,4,M3-15,UNSET,PILOT_CANDIDATE,,,UNSET,README / 4 / M3 细分任务,71,75
M3-17,M3,完成 C++ Qt 问题记录、修正和复查,原始问题、处理过程、回归结果和五项 AI 交付记录,中,2,M3-16,UNSET,PILOT_CANDIDATE,,,UNSET,README / 4 / M3 细分任务,75,77
M3-18,M3,汇总三个平台结果并准备 M4 输入,七部分规则、生成文件、差异、截图、命令和回退包,中,2,M3-09、M3-12、M3-17,UNSET,PILOT_CANDIDATE,,,UNSET,README / 4 / M3 细分任务,77,79
M4-01,M4,固定 Token、脚本、项目、环境、命令和截图基线,可重复使用的第一轮验证输入,小,1,M3-18,UNSET,PILOT_CANDIDATE,,,UNSET,README / 4 / M4 细分任务,79,80
M4-02,M4,确认可安全重建的文件并准备干净状态,自动生成文件清单和人工维护文件保护结果,中,2,M4-01,UNSET,PILOT_CANDIDATE,,,UNSET,README / 4 / M4 细分任务,80,82
M4-03,M4,从 Token 重新生成 PyQt 文件,PyQt 生成命令、文件和差异结果,中,2,M4-02,UNSET,PILOT_CANDIDATE,,,UNSET,README / 4 / M4 细分任务,82,84
M4-04,M4,从 Token 重新生成 Vue2 文件,Vue2 生成命令、文件和差异结果,中,2,M4-02,UNSET,PILOT_CANDIDATE,,,UNSET,README / 4 / M4 细分任务,82,84
M4-05,M4,从 Token 重新生成 C++ Qt 文件,C++ Qt 生成命令、文件和差异结果,中,2,M4-02,UNSET,PILOT_CANDIDATE,,,UNSET,README / 4 / M4 细分任务,82,84
M4-06,M4,重新构建并运行三个平台首批组件,组件状态、布局和 Icon 检查结果,大,4,M4-03、M4-04、M4-05,UNSET,PILOT_CANDIDATE,,,UNSET,README / 4 / M4 细分任务,84,88
M4-07,M4,重新运行两个真实业务试点,页面效果、关键操作和业务结果记录,大,4,M4-06,UNSET,PILOT_CANDIDATE,,,UNSET,README / 4 / M4 细分任务,88,92
M4-08,M4,记录并处理第一轮问题,原始问题、修正、复查、失败和回退过程,中,2,M4-07,UNSET,PILOT_CANDIDATE,,,UNSET,README / 4 / M4 细分任务,92,94
M4-09,M4,选择并修改一个三平台共用 Token,受控修改值、使用位置和预期传播范围,小,1,M4-08,UNSET,PILOT_CANDIDATE,,,UNSET,README / 4 / M4 细分任务,94,95
M4-10,M4,重新生成并检查受控修改的传播,预期变化、非预期变化和三个平台对比结果,大,4,M4-09,UNSET,PILOT_CANDIDATE,,,UNSET,README / 4 / M4 细分任务,95,99
M4-11,M4,恢复 Token 并重新生成基线,生成文件、组件和页面恢复结果,中,2,M4-10,UNSET,PILOT_CANDIDATE,,,UNSET,README / 4 / M4 细分任务,99,101
M4-12,M4,按五项完成条件形成阶段结论,两轮过程证据、完成判断和下一轮任务,中,2,M4-11,UNSET,PILOT_CANDIDATE,,,UNSET,README / 4 / M4 细分任务,101,103
后续-01,后续,标准化其余导航类组件,底部页签、子页签、标题栏、导航点的 Pixso 组件、状态和 Token 关系,中,2,M4-12,UNSET,POST_PILOT,,,UNSET,README / 4 / 首批试点后的后续任务池,103,105
后续-02,后续,标准化其余通用展示类组件,除动态数据可视化外的文本、分隔、提示、进度、滚动、图片等组件,大,4,M4-12,UNSET,POST_PILOT,,,UNSET,README / 4 / 首批试点后的后续任务池,103,107
后续-03,后续,标准化其余操作类组件,操作块、工具栏、核心操作栏、菜单和文本选择菜单等组件,大,4,M4-12,UNSET,POST_PILOT,,,UNSET,README / 4 / 首批试点后的后续任务池,103,107
后续-04,后续,标准化其余输入与选择类组件,搜索框、数字加减、图案锁、开关、评分、滑动、选择器和分段按钮等组件,大,4,M4-12,UNSET,POST_PILOT,,,UNSET,README / 4 / 首批试点后的后续任务池,103,107
后续-05,后续,标准化其余容器类组件,列表、弹出框和半模态面板的结构、状态和 Token 关系,中,2,M4-12,UNSET,POST_PILOT,,,UNSET,README / 4 / 首批试点后的后续任务池,103,105
后续-06,后续,建立动态图表和机械原理图的组件方法,稳定视觉参数、运行数据、绘制逻辑、组件合同和代表性示例,大,4,M4-12,UNSET,POST_PILOT,,,UNSET,README / 4 / 首批试点后的后续任务池,103,107
后续-07,后续,整理完整业务 Icon 并维护集团对应关系,业务 Icon 库、集团对应表、差异记录和替换规则,大,4,M4-12,UNSET,POST_PILOT,,,UNSET,README / 4 / 首批试点后的后续任务池,103,107
后续-08,后续,整理图片和插画资产的统一管理方法,文件、命名、版本、资源索引、Token 边界和引用规则,中,2,M4-12,UNSET,POST_PILOT,,,UNSET,README / 4 / 首批试点后的后续任务池,103,105
后续-09,后续,扩展 PyQt 的其余 UCD 组件和业务页面,可复用组件、现有页面整改和新页面接入结果,大,4,后续-01、后续-02、后续-03、后续-04、后续-05,UNSET,POST_PILOT,,,UNSET,README / 4 / 首批试点后的后续任务池,107,111
后续-10,后续,扩展 Vue2 的其余 UCD 组件和业务页面,可复用组件、现有页面整改和新页面接入结果,大,4,后续-01、后续-02、后续-03、后续-04、后续-05,UNSET,POST_PILOT,,,UNSET,README / 4 / 首批试点后的后续任务池,107,111
后续-11,后续,扩展 C++ Qt 的其余 UCD 组件和业务页面,可复用组件、现有页面整改和新页面接入结果,大,4,后续-01、后续-02、后续-03、后续-04、后续-05,UNSET,POST_PILOT,,,UNSET,README / 4 / 首批试点后的后续任务池,107,111
后续-12,后续,为 Vue3 建立转换脚本并接入首批组件,Token 转换器、生成文件、首批组件和项目调用结果,大,4,M4-12,UNSET,POST_PILOT,,,UNSET,README / 4 / 首批试点后的后续任务池,103,107
后续-13,后续,扩展 Vue3 的其余 UCD 组件和业务页面,可复用组件、现有页面整改和新页面接入结果,大,4,后续-01、后续-02、后续-03、后续-04、后续-05、后续-12,UNSET,POST_PILOT,,,UNSET,README / 4 / 首批试点后的后续任务池,107,111
后续-14,后续,扩大已有界面的自动扫描和分批整改能力,raw 值、旧样式、未知语义和修改差异报告,大,4,M4-12,UNSET,POST_PILOT,,,UNSET,README / 4 / 首批试点后的后续任务池,103,107
后续-15,后续,建立 Token、组件和生成器的发布记录,版本、变更内容、兼容说明、废弃项和回退入口,中,2,M4-12,UNSET,POST_PILOT,,,UNSET,README / 4 / 首批试点后的后续任务池,103,105
后续-16,后续,扩大自动检查和界面对比范围,Schema、引用、生成结果、组件状态和代表性页面回归结果,大,4,后续-09、后续-10、后续-11、后续-13、后续-14,UNSET,POST_PILOT,,,UNSET,README / 4 / 首批试点后的后续任务池,111,115
后续-17,后续,固定可重复使用的 AI 组件与模块页面交付方法,输入要求、修改边界、交付文件、检查证据和可复用任务模板,大,4,后续-09、后续-10、后续-11、后续-13,UNSET,POST_PILOT,,,UNSET,README / 4 / 首批试点后的后续任务池,111,115
后续-18,后续,建立团队使用说明和轻量维护节奏,使用入口、常见操作、问题记录、定期复查和维护清单,中,2,后续-15、后续-16、后续-17,UNSET,POST_PILOT,,,UNSET,README / 4 / 首批试点后的后续任务池,115,117
